# POC项目

How a schedule from a web Gantt chart changed from version to version. A marks actual dates.

## Version 1 (saved 2024-10-12)

| ID | Task | Duration | Start | Finish | Predecessors |
| --- | --- | --- | --- | --- | --- |
| 2 | SOR确认 | 4d | 2024-09-25 | 2024-09-30 |  |
| 3 | 开发文档交付 | 18d | 2024-10-01 | 2024-10-24 | 2 |
| 4 | 开发环境提供 | 23d | 2024-09-25 | 2024-10-25 |  |
| 5 | 整车环境提供 | 23d | 2024-09-25 | 2024-10-25 |  |
| 6 | 8255平台移植 | 15d | 2024-10-28 | 2024-11-15 | 4 |
| 7 | 感知算法调优 | 20d | 2024-11-18 | 2024-12-13 | 6 |
| 8 | 台架联合调试 | 20d | 2024-11-18 | 2024-12-13 | 6 |
| 9 | 实车联合调试 | 13d | 2024-12-16 | 2025-01-01 | 8 |
| 10 | β版本交付 | 12d | 2025-01-02 | 2025-01-17 | 9 |
| 11 | 实车效果调优 | 10d | 2025-01-20 | 2025-01-31 | 10 |
| 12 | Final版本交付 | 5d | 2025-02-03 | 2025-02-07 | 11 |
| 13 | 版本验收 | 5d | 2025-02-10 | 2025-02-14 | 12 |

## Version 2 (saved 2024-10-12)

Last finish stays 2025-02-14. Complete tasks 0 → 2.

Added:

| ID | Task | Duration | Start | Finish | Predecessors |
| --- | --- | --- | --- | --- | --- |
| 2 | 依赖项确认 | 20d | 2024-09-25 | 2024-10-22 |  |
| 3 | 功能列表确认 | 8d | 2024-09-25 | 2024-10-04 |  |
| 5 | 功能列表-UE确认 | 6d | 2024-10-07 | 2024-10-14 | 3 |
| 6 | 功能列表-内部UI作成 | 5d | 2024-10-15 | 2024-10-21 | 5 |
| 7 | 功能列表-测试CASE-V1 | 1d | 2024-10-15 | 2024-10-15 | 5 |
| 8 | 功能列表-异常诊断-V1 | 1d | 2024-10-15 | 2024-10-15 | 5 |
| 9 | 开发环境-开发板提供 | 23d | 2024-09-25 | 2024-10-25 |  |
| 10 | 整车环境-OMS相机采购 | 10d | 2024-10-14 | 2024-10-25 |  |
| 11 | 整车环境-AVM相机采购 | 6d | 2024-10-11 | 2024-10-18 |  |
| 17 | 整车环境-车辆提供 | 23d | 2024-09-25 | 2024-10-25 |  |
| 18 | MCU开发环境-MCU接口资料准备 | 3d | 2024-10-14 | 2024-10-16 |  |
| 19 | MCU控制协议-破解和调试 | 10d | 2024-10-28 | 2024-11-08 | 20, 18, 17 |
| 20 | MCU开发环境-编译器及工具准备 | 6d | 2024-10-14 | 2024-10-21 |  |

Removed: 2 SOR确认; 4 开发环境提供; 5 整车环境提供

Changed:

| ID | Task | Start | Finish | Duration | Complete | Predecessors |
| --- | --- | --- | --- | --- | --- | --- |
| 4 | 开发文档交付 | 2024-10-01 → 2024-10-07 (+6d) | 2024-10-24 → 2024-10-31 (+7d) | 18d → 19d | 0% → 30% | SOR确认 → 3 |
| 12 | 8255平台移植 |  |  |  |  | 开发环境提供 → 9, 11, 10 |

## Version 3 (saved 2024-10-15)

Last finish stays 2025-02-14. Complete tasks 2 → 4.

Added:

| ID | Task | Duration | Start | Finish | Predecessors |
| --- | --- | --- | --- | --- | --- |
| 7 | 功能列表-客户UI作成 | 9d | 2024-10-15 | 2024-10-25 | 5 |

Changed:

| ID | Task | Finish | Duration | Complete |
| --- | --- | --- | --- | --- |
| 6 | 功能列表-内部UI作成 | 2024-10-21 → 2024-11-01 (+11d) | 5d → 14d |  |
| 8 | 功能列表-测试CASE-V1 |  |  | 0% → 100% |
| 9 | 功能列表-异常诊断-V1 |  |  | 0% → 100% |
| 11 | 整车环境-OMS相机采购 |  |  | 0% → 20% |
| 12 | 整车环境-AVM相机采购 |  |  | 0% → 20% |

## Version 4 (saved 2024-10-16)

Last finish stays 2025-02-14.

Added:

| ID | Task | Duration | Start | Finish |
| --- | --- | --- | --- | --- |
| 14 | 整车环境-AVM样品相机，取流调试 | 5d | 2024-10-17 | 2024-10-23 |

Changed:

| ID | Task | Complete |
| --- | --- | --- |
| 20 | MCU开发环境-MCU接口资料准备 | 0% → 50% |

## Version 5 (saved 2024-10-17)

Last finish stays 2025-02-14.

Added:

| ID | Task | Duration | Start | Finish | Predecessors |
| --- | --- | --- | --- | --- | --- |
| 8 | 应用开发-手机APP开发 | 10d | 2024-10-28 | 2024-11-08 | 7 |
| 9 | 应用开发-车机APP开发 | 15d | 2024-10-28 | 2024-11-15 | 7 |

Changed:

| ID | Task | Start | Finish | Duration | Complete |
| --- | --- | --- | --- | --- | --- |
| 7 | 功能列表-客户UI作成 |  |  |  | 0% → 20% |
| 16 | 整车环境-AVM样品相机，取流调试 |  |  |  | 0% → 10% |
| 21 | 整车环境-车辆提供 |  | 2024-10-25 → 2024-11-15 (+21d) | 23d → 38d |  |
| 22 | MCU开发环境-MCU接口资料准备 |  | 2024-10-16 → 2024-10-25 (+9d) | 3d → 10d |  |
| 23 | MCU控制协议-破解和调试 | 2024-10-28 → 2024-11-18 (+21d) | 2024-11-08 → 2024-11-29 (+21d) |  |  |
| 24 | MCU开发环境-编译器及工具准备 |  | 2024-10-21 → 2024-10-25 (+4d) | 6d → 10d | 0% → 30% |

## Version 6 (saved 2024-10-22)

Last finish stays 2025-02-14.

Changed:

| ID | Task | Complete |
| --- | --- | --- |
| 16 | 整车环境-AVM样品相机，取流调试 | 10% → 30% |

## Version 7 (saved 2024-10-23)

Last finish stays 2025-02-14. Complete tasks 4 → 5.

Added:

| ID | Task | Duration | Start | Finish | Predecessors |
| --- | --- | --- | --- | --- | --- |
| 6 | 功能列表-内部-UI作成 | 9d | 2024-10-15 | 2024-10-25 | 5 |
| 7 | 应用开发-内部-手机端功能开发 | 15d | 2024-10-28 | 2024-11-15 | 6 |
| 8 | 应用开发-内部-实现离车泊入、遥控泊出功能 | 20d | 2024-10-28 | 2024-11-22 | 6 |
| 9 | 应用开发-内部-实现直进直出功能 | 25d | 2024-10-28 | 2024-11-29 | 6 |
| 13 | 功能列表-验收CASE-V1 | 1d | 2024-10-15 | 2024-10-15 | 5 |
| 15 | 摸底测试-IVISTA | 5d | 2024-11-04 | 2024-11-08 | 14 |
| 22 | 整车环境-USS样品 | 3d | 2024-10-23 | 2024-10-25 |  |

Removed: 6 功能列表-内部UI作成

Changed:

| ID | Task | Finish | Duration | Complete |
| --- | --- | --- | --- | --- |
| 2 | 依赖项确认 |  |  | 80% → 100% |
| 10 | 功能列表-客户UI作成 |  |  | 20% → 30% |
| 14 | 功能列表-测试CASE-V1 | 2024-10-15 → 2024-11-01 (+17d) | 1d → 14d | 100% → 0% |
| 19 | 整车环境-AVM相机采购 | 2024-10-18 → 2024-10-25 (+7d) | 6d → 11d |  |
